# Planning

Schedule from MS Project, 2010-10-28 to 2011-06-01, status date 2011-06-05, A marks actual dates.
Hewlett-Packard

## Calendars

- Работа над курсовой: Mon-Fri 09:00-13:00, 14:00-18:00; Sat 14:00-16:00, 18:00-22:00; Sun 16:00-18:00, 19:00-21:00.

## Resources

| Resource | Notes |
| --- | --- |
| Разработчик | Михаил Сергеевич Дубов, студент I курса отделения Программной инженерии факультета Бизнес-информатики НИУ-ВШЭ |
| Научный руководитель | Ефим Михайлович Гринкруг, кандидат технических наук, доцент кафедры управления разработкой программного обеспечения НИУ-ВШЭ. |
| Тестировщики Microsoft Marketplace for Windows Phone 7 | Сотрудники интернет-магазина приложений Microsoft Marketplace for Windows Phone 7, выполняющие проверку каждого поступающего к ним приложения на соответствие требованиям магазина в течение трех дней. |

## Schedule

| ID | WBS | Task | Type | Duration | Start | Finish | Predecessors | Complete | Remaining | Total slack | Free slack | Constraint | Resources | Work | Actual work |
| --- | --- | --- | --- | --- | --- | --- | --- | --- | --- | --- | --- | --- | --- | --- | --- |
| 1 | 1 | **Разработка приложения "Planets" для Windows Phone 7** |  | 193.1d | 2010-10-28 A | 2011-06-01 |  | 78% | 42.59d | 0d |  |  |  | 562.9h | 421.38h |
| 2 | 1.1 | **Итерация 1. Разработка прототипа мобильного приложения, запускаемого на ПК** |  | 54.6d | 2010-10-28 A | 2010-12-28 |  | 99% | 0.36d | 99.45d | 4.5d |  |  | 144.1h | 143.1h |
| 3 | 1.1.1 | **Сбор требований** |  | 14.6d | 2010-10-28 A | 2010-11-14 |  | 99% | 0d | 139.06d |  |  |  | 48.7h | 48.7h |
| 4 | 1.1.1.1 | Переговоры с научным руководителем насчет выбора темы курсовой работы |  | 3d | 2010-10-28 A | 2010-10-31 A |  | 100% |  |  |  | start no earlier than 2010-10-28 | Разработчик; Научный руководитель [25%] | 17.5h | 17.5h |
| 5 | 1.1.1.2 | Формулирование базовых требований к разрабатываемому приложению |  | 1d | 2010-11-02 A | 2010-11-06 A | 4 | 100% |  |  |  |  | Разработчик | 8h | 8h |
| 6 | 1.1.1.3 | Обсуждение требований с научным руководителем |  | 1d | 2010-11-06 A | 2010-11-07 A | 5 | 100% |  |  |  |  | Разработчик; Научный руководитель [40%] | 7.2h | 7.2h |
| 7 | 1.1.1.4 | Детализация требований |  | 2d | 2010-11-07 A | 2010-11-14 A | 6 | 100% |  |  |  |  | Разработчик | 16h | 16h |
| 8 | 1.1.1.5 | Сбор требований на итерации 1 завершен | milestone | 0d | 2010-11-14 | 2010-11-14 | 7 |  |  | 139.06d | 2.38d |  |  |  |  |
| 9 | 1.1.2 | **Повышение квалификации разработчика** |  | 10.25d | 2010-11-16 A | 2010-11-28 | 8 | 99% | 0d | 126.43d |  |  |  | 32h | 32h |
| 10 | 1.1.2.1 | Чтение литературы по теме "Кватернионы" |  | 4d | 2010-11-16 A | 2010-11-28 A |  | 100% |  |  |  |  | Разработчик | 32h | 32h |
| 11 | 1.1.2.2 | Повышение квалификации на итерации 1 завершено | milestone | 0d | 2010-11-28 | 2010-11-28 | 10 |  |  | 126.43d | 2.25d |  |  |  |  |
| 12 | 1.1.3 | **Аналитика** |  | 4d | 2010-11-30 A | 2010-12-05 | 11 | 99% | 0d | 120.18d |  |  |  | 16h | 16h |
| 13 | 1.1.3.1 | Проектирование структуры данных для представления кватернионов |  | 2d | 2010-11-30 A | 2010-12-05 A |  | 100% |  |  |  |  | Разработчик | 16h | 16h |
| 14 | 1.1.3.2 | Анализ и проектирование на итерации 1 завершены | milestone | 0d | 2010-12-05 | 2010-12-05 | 13 |  |  | 120.18d | 2.25d |  |  |  |  |
| 15 | 1.1.4 | **Разработка** |  | 10.25d | 2010-12-07 A | 2010-12-19 | 14 | 99% | 0d | 107.68d |  |  |  | 32h | 32h |
| 16 | 1.1.4.1 | Разработка алгоритма поворота трехмерных фигур посредством операций над кватернионами |  | 2d | 2010-12-07 A | 2010-12-12 A |  | 100% |  |  |  |  | Разработчик | 16h | 16h |
| 17 | 1.1.4.2 | Разработка прототипа, визуализирующего операции над кватернионами путем вращения простых трехмерных объектов |  | 2d | 2010-12-14 A | 2010-12-19 A | 16 | 100% |  |  |  |  | Разработчик | 16h | 16h |
| 18 | 1.1.4.3 | Разработка на итерации 1 завершена | milestone | 0d | 2010-12-19 | 2010-12-19 | 17 |  |  | 107.68d | 2.25d |  |  |  |  |
| 19 | 1.1.5 | **Документирование** |  | 6.38d | 2010-12-21 A | 2010-12-28 | 18 | 94% | 0.4d | 99.45d |  |  |  | 15.4h | 14.4h |
| 20 | 1.1.5.1 | Написание технического задания |  | 0.5d | 2010-12-21 A | 2010-12-21 A |  | 100% |  |  |  |  | Разработчик | 4h | 4h |
| 21 | 1.1.5.2 | Обсуждение аспектов ТЗ с научным руководителем |  | 1d | 2010-12-25 A | 2010-12-26 A | 20 | 100% |  |  |  |  | Разработчик [50%]; Научный руководитель [30%] | 7.4h | 7.4h |
| 22 | 1.1.5.3 | Корректировка ТЗ |  | 0.5d | 2010-12-28 A | 2010-12-28 | 21 | 75% | 0.12d | 97.62d | 0d |  | Разработчик | 4h | 3h |
| 23 | 1.1.5.4 | Документирование на итерации 1 завершено | milestone | 0d | 2010-12-28 | 2010-12-28 | 22 |  |  | 99.45d |  |  |  |  |  |
| 24 | 1.2 | **Итерация 2. Разработка первой версии мобильного приложения** |  | 61.75d | 2011-01-03 A | 2011-03-12 | 2 | 97% | 1.85d | 35.06d | 0d |  |  | 184.8h | 182.28h |
| 25 | 1.2.1 | **Повышение квалификации разработчика** |  | 12d | 2011-01-03 A | 2011-01-16 | 2 | 94% | 0.74d | 84.81d |  |  |  | 72.8h | 70.28h |
| 26 | 1.2.1.1 | Чтение литературы по теме "Разработка под Windows Phone 7" |  | 7d | 2011-01-03 A | 2011-01-12 |  | 85% | 1.05d | 87.12d |  |  | Разработчик [30%] | 16.8h | 14.28h |
| 27 | 1.2.1.2 | Разработка небольших тренировочных приложений для Windows Phone 7 |  | 10d | 2011-01-03 A | 2011-01-16 A | 26SS | 100% |  |  |  |  | Разработчик [70%] | 56h | 56h |
| 28 | 1.2.1.3 | Повышение квалификации на итерации 2 завершено | milestone | 0d | 2011-01-16 | 2011-01-16 | 27 |  |  | 84.81d | 0d |  |  |  |  |

| ID | WBS | Task | Type | Duration | Start | Finish | Predecessors | Complete | Remaining | Total slack | Free slack | Resources | Work | Actual work |
| --- | --- | --- | --- | --- | --- | --- | --- | --- | --- | --- | --- | --- | --- | --- |
| 29 | 1.2.2 | **Аналитика** |  | 6d | 2011-01-16 A | 2011-01-23 | 28 | 99% | 0d | 78.81d |  |  | 16h | 16h |
| 30 | 1.2.2.1 | Анализ сценариев использования приложения |  | 2d | 2011-01-16 A | 2011-01-23 A |  | 100% |  |  |  | Разработчик | 16h | 16h |
| 31 | 1.2.2.2 | Анализ и проектирование на итерации 2 завершены | milestone | 0d | 2011-01-23 | 2011-01-23 | 30 |  |  | 78.81d | 0d |  |  |  |
| 32 | 1.2.3 | **Разработка** |  | 43.75d | 2011-01-23 A | 2011-03-12 | 31 | 99% | 0d | 35.06d |  |  | 96h | 96h |
| 33 | 1.2.3.1 | Разработка алгоритмов построения моделей эллипсов и кругов из графических примитивов |  | 2d | 2011-01-23 A | 2011-01-30 A |  | 100% |  |  |  | Разработчик | 16h | 16h |
| 34 | 1.2.3.2 | Разработка алгоритмов построения моделей эллипсоидов и сфер из графических примитивов |  | 3d | 2011-01-30 A | 2011-02-11 A | 33 | 100% |  |  |  | Разработчик | 24h | 24h |
| 35 | 1.2.3.3 | Разработка алгоритмов натягивания текстур на трехмерные модели |  | 4d | 2011-02-12 A | 2011-02-16 A | 34 | 100% |  |  |  |  |  |  |
| 36 | 1.2.3.4 | Разработка алгоритмов обработки пользовательского ввода (ввода с сенсорного экрана мобильного устройства) |  | 3d | 2011-02-18 A | 2011-02-26 A | 35 | 100% |  |  |  | Разработчик | 24h | 24h |
| 37 | 1.2.3.5 | Разработка алгорита вывода 3D-моделей на экран; добавление в приложение моделей планеты Земля и ее спутника - Луны |  | 2d | 2011-02-27 A | 2011-03-05 A | 36 | 100% |  |  |  | Разработчик | 16h | 16h |
| 38 | 1.2.3.6 | Оптимизация алгоритмов поворота трехмерных объектов через кватернионы |  | 2d | 2011-03-06 A | 2011-03-12 A | 37 | 100% |  |  |  | Разработчик | 16h | 16h |
| 39 | 1.2.3.7 | Разработка на итерации 2 завершена | milestone | 0d | 2011-03-12 | 2011-03-12 | 38 |  |  | 35.06d |  |  |  |  |
| 40 | 1.3 | **Итерация 3. Разработка окончательной версии мобильного приложения** |  | 56.5d | 2011-03-13 A | 2011-05-15 | 24 | 58% | 23.69d | 2.25d | 0.25d |  | 166h | 96h |
| 41 | 1.3.1 | **Сбор требований** |  | 2.5d | 2011-03-13 A | 2011-03-15 | 24 | 99% | 0d | 38.18d |  |  | 8h | 8h |
| 42 | 1.3.1.1 | Формулирование требований, расширяющих функциональность и круг сценариев использования приложения |  | 0.5d | 2011-03-13 A | 2011-03-13 A |  | 100% |  |  |  | Разработчик | 4h | 4h |
| 43 | 1.3.1.2 | Формулирование требований к пользовательскому интерфейсу |  | 0.5d | 2011-03-15 A | 2011-03-15 A | 42 | 100% |  |  |  | Разработчик | 4h | 4h |
| 44 | 1.3.1.3 | Сбор требований на итерации 3 завершен | milestone | 0d | 2011-03-15 | 2011-03-15 | 43 |  |  | 38.18d | 2.12d |  |  |  |
| 45 | 1.3.2 | **Повышение квалификации разработчика** |  | 1.62d | 2011-03-18 A | 2011-03-19 | 44 | 99% | 0d | 34.43d |  |  | 8h | 8h |
| 46 | 1.3.2.1 | Изучение методов оптимизации вычисления результатов операций над кватернионами |  | 1d | 2011-03-18 A | 2011-03-19 A |  | 100% |  |  |  | Разработчик | 8h | 8h |
| 47 | 1.3.2.2 | Повышение квалификации разработчика на итерации 3 завершено | milestone | 0d | 2011-03-19 | 2011-03-19 | 46 |  |  | 34.43d | 0d |  |  |  |
| 48 | 1.3.3 | **Аналитика** |  | 2.5d | 2011-03-20 A | 2011-03-22 | 47 | 99% | 0d | 31.93d |  |  | 8h | 8h |
| 49 | 1.3.3.1 | Проектирование пользовательского интерфейса приложения |  | 1d | 2011-03-20 A | 2011-03-22 A |  | 100% |  |  |  | Разработчик | 8h | 8h |
| 50 | 1.3.3.2 | Анализ и проектирование на итерации 3 завершены | milestone | 0d | 2011-03-22 | 2011-03-22 | 49 |  |  | 31.93d | 3d |  |  |  |
| 51 | 1.3.4 | **Разработка** |  | 32d | 2011-03-25 A | 2011-04-30 | 50 | 82% | 5.82d | 2.75d |  |  | 88h | 72h |
| 52 | 1.3.4.1 | Разработка пользовательского интерфейса |  | 3d | 2011-03-25 A | 2011-04-02 A |  | 100% |  |  |  | Разработчик | 24h | 24h |
| 53 | 1.3.4.2 | Добавление в приложение функции определения местоположения пользователя |  | 2d | 2011-04-03 A | 2011-04-09 A | 52 | 100% |  |  |  | Разработчик | 16h | 16h |
| 54 | 1.3.4.3 | Расширение приложения за счет добавления в него новых моделей планет |  | 2d | 2011-04-10 A | 2011-04-16 A | 53 | 100% |  |  |  | Разработчик | 16h | 16h |
| 55 | 1.3.4.4 | Моделирование вращения планет и их спутников |  | 2d | 2011-04-17 A | 2011-04-23 A | 54 | 100% |  |  |  | Разработчик | 16h | 16h |
| 56 | 1.3.4.5 | Оптимизация вычисления результатов операций над кватернионами |  | 1.5d | 2011-04-24 | 2011-04-30 | 55 |  |  | 2d | 0d | Разработчик | 12h |  |
| 57 | 1.3.4.6 | Добавление в приложение информации о физических зарактеристиках планет |  | 0.5d | 2011-04-30 | 2011-04-30 | 56 |  |  | 2.25d | 0d | Разработчик | 4h |  |
| 58 | 1.3.4.7 | Разработка на итерации 3 завершена | milestone | 0d | 2011-04-30 | 2011-04-30 | 57 |  |  | 2.75d | 0d |  |  |  |

| ID | WBS | Task | Type | Duration | Start | Finish | Predecessors | Total slack | Free slack | Constraint | Resources | Work |
| --- | --- | --- | --- | --- | --- | --- | --- | --- | --- | --- | --- | --- |
| 59 | 1.3.5 | **Тестирование** |  | 3d | 2011-05-01 | 2011-05-04 | 58 | 2.5d |  |  |  | 12h |
| 60 | 1.3.5.1 | Тестирование приложения на соответствие требованиям |  | 0.5d | 2011-05-01 | 2011-05-02 |  | 2.5d | 0.5d |  | Разработчик | 4h |
| 61 | 1.3.5.2 | Разработка автотестов для тестирования производительности алгоритмов |  | 0.5d | 2011-05-02 | 2011-05-03 | 60 | 2.25d | 0.5d |  | Разработчик | 4h |
| 62 | 1.3.5.3 | Тестирование приложения на производительность на мобильном устройстве |  | 0.5d | 2011-05-03 | 2011-05-04 | 61 | 2.25d | 0d |  | Разработчик | 4h |
| 63 | 1.3.5.4 | Тестирование на итерации 3 завершено | milestone | 0d | 2011-05-04 | 2011-05-04 | 62 | 2.5d | 0.5d |  |  |  |
| 64 | 1.3.6 | **Документирование** |  | 9.25d | 2011-05-04 | 2011-05-15 | 63 | 2d |  |  |  | 42h |
| 65 | 1.3.6.1 | Написание пояснительной записки |  | 0.5d | 2011-05-04 | 2011-05-05 |  | 2d | 0.5d |  | Разработчик | 4h |
| 66 | 1.3.6.2 | Написание руководства оператора |  | 0.5d | 2011-05-05 | 2011-05-06 | 65 | 2.5d | 0.5d |  | Разработчик | 4h |
| 67 | 1.3.6.3 | Написание программы и методики испытаний |  | 0.5d | 2011-05-06 | 2011-05-07 | 66 | 2.5d | 0.75d |  | Разработчик | 4h |
| 68 | 1.3.6.4 | Оформление текста программы (добавление титульного листа, комментариев) |  | 0.5d | 2011-05-08 | 2011-05-09 | 67 | 4.75d | 0.5d |  | Разработчик | 4h |
| 69 | 1.3.6.5 | Создание презентации приложения в MS PowerPoint |  | 1d | 2011-05-09 | 2011-05-13 | 68 | 0.88d | 0d |  | Разработчик | 8h |
| 70 | 1.3.6.6 | Согласование документации с научным руководителем |  | 2.17d | 2011-05-13 | 2011-05-15 | 69 | 1d | 0d |  | Научный руководитель; Разработчик | 18h |
| 71 | 1.3.6.7 | Документирование на итерации 3 завершено | milestone | 0d | 2011-05-15 | 2011-05-15 | 70 | 2.25d |  |  |  |  |
| 72 | 1.4 | **Распространение и сопровождение приложения** |  | 15.5d | 2011-05-16 | 2011-06-01 | 40, 71 | 0d |  |  |  | 68h |
| 73 | 1.4.1 | Загрузка приложения на Windows Phone 7 Marketplace |  | 3d | 2011-05-16 | 2011-05-18 |  | 2d |  |  | Тестировщики Microsoft Marketplace for Windows Phone 7 | 24h |
| 74 | 1.4.2 | Анализ обратной связи от пользователей приложения |  | 0.5d | 2011-05-20 | 2011-05-21 | 73 | 0.62d | 0d |  | Разработчик | 4h |
| 75 | 1.4.3 | Разработка обновления приложения, учитывающего пожелания пользователей |  | 2d | 2011-05-21 | 2011-05-28 | 74 | 0.62d |  |  | Разработчик | 16h |
| 76 | 1.4.4 | Загрузка обновленной версии приложения на Windows Phone 7 Marketplace |  | 3d | 2011-05-30 | 2011-06-01 | 75 | 0d |  | start no earlier than 2011-05-29 | Тестировщики Microsoft Marketplace for Windows Phone 7 | 24h |
| 77 | 1.4.5 | Распространение и сопровождение приложения завершены | milestone | 0d | 2011-06-01 | 2011-06-01 | 76 | 0d |  |  |  |  |
| 78 | 1.5 | Работа над проектом завершена | milestone | 0d | 2011-06-01 | 2011-06-01 | 77 | 0d |  |  |  |  |
